# STO

Schedule from a web Gantt chart, 2024-07-03 to 2024-08-30.
Saturdays and Sundays are off

## Schedule

| ID | WBS | Task | Type | Duration | Start | Finish | Predecessors | Complete | Status |
| --- | --- | --- | --- | --- | --- | --- | --- | --- | --- |
| 2 | 1 | **R1.41** |  | 20d | 2024-07-03 | 2024-07-30 |  | 74% |  |
| 3 | 1.1 | R1.41 dev |  | 8d | 2024-07-03 | 2024-07-12 |  | 100% | done |
| 4 | 1.2 | R1.41 sit |  | 6d | 2024-07-15 | 2024-07-22 |  | 100% | done |
| 5 | 1.3 | R1.41 uat |  | 4d | 2024-07-23 | 2024-07-26 |  |  |  |
| 6 | 1.4 | R1.41 release | fixed end | 1d | 2024-07-30 | 2024-07-30 |  |  | waiting |
| 7 | 2 | **AUTO EARN OPTIMIZATION PLAN** |  | 28d | 2024-07-24 | 2024-08-30 |  | 6% |  |
| 8 | 2.1 | **Auto earn optimizations** |  | 11d | 2024-07-24 | 2024-08-07 |  | 35% |  |
| 9 | 2.1.1 | FP invoice API update (WCHAT-14420) |  | 6d | 2024-07-24 | 2024-07-31 |  | 100% | done |
| 10 | 2.1.2 | Points Posting Failure Handling (WCHAT-15359) |  | 6d | 2024-07-24 | 2024-07-31 |  |  |  |
| 11 | 2.1.3 | SIT for 14420&15359 |  | 2d | 2024-08-01 | 2024-08-02 | 10 |  | waiting |
| 12 | 2.1.4 | UAT for 14420&15359 |  | 2d | 2024-08-05 | 2024-08-06 | 11 |  | waiting |
| 13 | 2.1.5 | Release for 14420&15359 | fixed end | 1d | 2024-08-07 | 2024-08-07 | 12 |  | waiting |
| 14 | 2.2 | **FP certification** |  | 18d | 2024-07-24 | 2024-08-16 |  |  |  |
| 15 | 2.2.1 | Execute FP test case |  | 2d | 2024-08-01 | 2024-08-02 | 10 |  | waiting |
| 16 | 2.2.2 | Submit FP test case |  | 1d | 2024-08-05 | 2024-08-05 | 15 |  | waiting |
| 17 | 2.2.3 | Review test case & back and forth |  | 9d | 2024-08-06 | 2024-08-16 | 16 |  | waiting |
| 18 | 2.2.4 | Prepare documents |  | 8d | 2024-07-24 | 2024-08-02 |  |  |  |
| 19 | 2.2.5 | Submit and review documents |  | 10d | 2024-08-05 | 2024-08-16 | 18 |  | waiting |
| 20 | 2.3 | **E2E** |  | 3d | 2024-08-28 | 2024-08-30 |  |  | waiting |
| 21 | 2.3.1 | Verification on Simphony hotel |  | 3d | 2024-08-28 | 2024-08-30 |  |  | waiting |
| 22 | 2.3.2 | Verification on Infrasys hotel |  | 1d | 2024-08-28 | 2024-08-28 |  |  | waiting |
| 23 | 2.4 | **Other optimizations** |  | 19d | 2024-08-01 | 2024-08-27 |  |  | waiting |
| 24 | 2.4.1 | Add Inline Label for Auto Earn Related Configuration (WCHAT-14795) |  | 19d | 2024-08-01 | 2024-08-27 |  |  | waiting |
| 25 | 2.4.2 | Request From Loyalty MKT_HP Wording Change (WCHAT-14335) |  | 19d | 2024-08-01 | 2024-08-27 |  |  | waiting |
| 26 | 2.4.3 | Request From Loyalty MKT_Order Confirmation Page Wording Change (WCHAT-14336) |  | 19d | 2024-08-01 | 2024-08-27 |  |  | waiting |
| 27 | 3 | CASH COUPON |  | 1d | 2024-07-03 | 2024-07-03 |  |  |  |
| 28 | 4 | R1.41.1 |  | 1d | 2024-07-03 | 2024-07-03 |  |  |  |
| 29 | 5 | R1.41.1 DEV |  | 21d | 2024-07-18 | 2024-08-15 |  |  |  |
| 30 | 6 | R1.41.1 sit |  | 1d | 2024-07-03 | 2024-07-03 |  |  |  |

Notes:
- 23: Planned in Sprint 44
